# Cronograma

How a schedule from MS Project changed from version to version. A marks actual dates.

## Version 1 (saved 2016-05-19)

Note of the change: Documentação

| ID | WBS | Task | Duration | Start | Finish | Predecessors | Total float | Constraint |
| --- | --- | --- | --- | --- | --- | --- | --- | --- |
| 1 | 1 | **CooAgro** | 35d | 2016-04-29 | 2016-06-16 |  |  |  |
| 2 | 1.1 | **Prospecção** | 10d | 2016-04-29 | 2016-05-12 |  |  |  |
| 3 | 1.1.1 | **Ptec** | 5d | 2016-04-29 | 2016-05-05 |  |  |  |
| 4 |  | Estudar dominio | 0.88d | 2016-04-29 | 2016-04-29 |  |  |  |
| 5 |  | Reuniões como cliente | 1.12d | 2016-05-02 | 2016-05-03 | 4 |  |  |
| 6 |  | Redigir Proposta | 3d | 2016-05-04 | 2016-05-06 | 5 |  |  |
| 7 |  | Revisar proposta | 1d | 2016-05-09 | 2016-05-09 | 6 |  |  |
| 8 |  | Aprova porposta | 1d | 2016-05-10 | 2016-05-10 | 7 | 31d | start no earlier than 2016-05-05 |
| 9 | 1.1.2 | **Est. Pre. Tam** | 2d | 2016-05-09 | 2016-05-10 | 3 |  |  |
| 10 |  | Estimar tamanho do projeto | 1d | 2016-05-10 | 2016-05-10 | 7 |  |  |
| 11 |  | Revisar estimativa de tamanho | 1d | 2016-05-10 | 2016-05-10 | 10 |  |  |
| 12 | 1.1.3 | **Est. Pref. Cronograma e Orçamentos** | 4d | 2016-05-16 | 2016-05-19 |  |  |  |
| 13 |  | Elaborar Cronograma e Orçamentos Preliminares | 2d | 2016-05-11 | 2016-05-12 | 9 |  |  |
| 14 |  | Revisão da Elaboração | 2d | 2016-05-13 | 2016-05-16 | 13 |  |  |
| 15 | 1.2 | **Análise** | 5d | 2016-05-09 | 2016-05-13 |  |  |  |
| 16 |  | Elicitação dos requisitos | 0.88d | 2016-05-10 | 2016-05-10 | 7 |  |  |
| 17 |  | Validação | 1d | 2016-05-11 | 2016-05-11 | 16 |  |  |
| 18 | 1.2.3 | **Doc Req** | 4d | 2016-05-09 | 2016-05-12 |  |  |  |
| 19 |  | Redigir Doc Req | 3d | 2016-05-12 | 2016-05-16 | 17 |  |  |
| 20 |  | Revisão do Doc Req | 0.88d | 2016-05-17 | 2016-05-17 | 19 |  |  |
| 21 | 1.2.4 | **Matriz de Rastriabilidade** | 4d | 2016-05-09 | 2016-05-12 |  |  |  |
| 22 |  | Elaborar a matriz | 1.88d | 2016-05-18 | 2016-05-19 | 20 |  |  |
| 23 |  | Revisar a Matriz | 1d | 2016-05-24 | 2016-05-24 | 22 |  |  |
| 24 |  | Projeto | 1.88d | 2016-05-09 | 2016-05-10 |  |  |  |
| 25 | 1.4 | **Implementação** | 24d | 2016-05-16 | 2016-06-16 |  |  |  |
| 26 |  | Release1 | 5d | 2016-05-25 | 2016-05-31 | 23 |  |  |
| 27 |  | Release2 | 6d | 2016-06-01 | 2016-06-08 | 26 |  |  |
| 28 |  | Release3 | 10d | 2016-06-09 | 2016-06-22 | 27 |  |  |
| 29 |  | Release4 | 6d | 2016-06-09 | 2016-06-16 |  |  |  |

## Version 2 (saved 2016-06-18)

Note of the change: Merge pull request #11 from Carlos-Henreis/Release3

Last finish 2016-06-22 → 2016-06-23 (+1d). Complete tasks 0 → 52.

Added:

| ID | Task | Duration | Start | Finish | Predecessors | Resources |
| --- | --- | --- | --- | --- | --- | --- |
| 16 | Reunir com o cliente | 1d | 2016-05-09 09:00 A | 2016-05-09 18:00 A |  | Carlos |
| 18 | Revisar Doc Req | 1d | 2016-05-12 09:00 A | 2016-05-12 18:00 A |  | Carlos |
| 27 | **UML** | 3d? | 2016-05-12 09:00 A | 2016-05-16 18:00 A |  |  |
| 28 | Elaborar diagramas | 2d | 2016-05-12 09:00 A | 2016-05-13 18:00 A |  | Carlos; Gabriel; Joyce |
| 29 | Revisar diagramas | 1d | 2016-05-16 09:00 A | 2016-05-16 18:00 A | 28 | Carlos; Gabriel; Joyce |
| 30 | Atualizar MRB | 1d | 2016-05-16 09:00 A | 2016-05-16 18:00 A | 29 | Carlos; Gabriel; Joyce |
| 31 | **Modelagem do banco de dados** | 4d? | 2016-05-16 09:00 A | 2016-05-19 18:00 A |  |  |
| 32 | Modelo Entidade Relaconamento | 2d | 2016-05-16 09:00 A | 2016-05-17 18:00 A |  | Carlos |
| 33 | Modelo Lógico | 2d | 2016-05-17 09:00 A | 2016-05-18 18:00 A | 32 | Carlos |
| 34 | Modelo fisico | 2d | 2016-05-18 09:00 A | 2016-05-19 18:00 A | 33 | Carlos |
| 35 | Revisar MBD | 1d | 2016-05-19 09:00 A | 2016-05-19 18:00 A | 34 | Carlos |
| 37 | **Estudar FrameWork** | 6d | 2016-05-19 09:00 | 2016-05-26 18:00 |  |  |
| 38 | Escolher FrameWork Adequado | 1d | 2016-05-16 09:00 A | 2016-05-16 18:00 A |  | Carlos; David; Gabriel; Joyce; Samuel |
| 39 | Ler documentação | 1d | 2016-05-17 09:00 A | 2016-05-17 18:00 A | 38 | Carlos; David; Gabriel; Joyce; Samuel |
| 40 | Implementar exemplos | 1d | 2016-05-18 09:00 A | 2016-05-18 18:00 A | 39 | Carlos; David; Gabriel; Joyce; Samuel |
| 42 | **Implementação** | 5d | 2016-05-26 09:00 A | 2016-06-01 18:00 |  |  |
| 43 | Estruturação do sistema | 1.5d | 2016-05-26 09:00 A | 2016-05-27 17:00 A |  | Carlos |
| 44 | Funcão de autenticação e validação das rotas | 5.5d | 2016-05-26 09:00 A | 2016-06-02 17:00 A |  | Carlos |
| 45 | [RFS1] Cadastrar usuário (Atendente) | 2.5d | 2016-05-26 09:00 A | 2016-05-28 17:00 A |  | Samuel |
| 46 | [RFS2] Consultar usuário (atendente) | 1.25d | 2016-05-26 09:00 A | 2016-05-27 15:00 A |  | Carlos; Samuel |
| 47 | [RFS3] Alterar usuário (atendente) | 1.25d | 2016-05-26 09:00 A | 2016-05-27 15:00 A |  | Carlos; Samuel |
| 48 | [RFS4] Remover usuário (atendente) | 2.5d | 2016-05-26 09:00 A | 2016-05-28 17:00 A |  | Samuel |
| 49 | **Teste** | 0.62d | 2016-06-02 09:00 A | 2016-06-02 15:00 A | 42 |  |
| 50 | Teste de autenticação e validação | 0.25d | 2016-06-02 09:00 A | 2016-06-02 15:00 A |  | Joyce |
| 51 | Teste de CRUD (atendente) | 0.25d | 2016-06-02 09:00 A | 2016-06-02 15:00 A |  | Joyce |
| 52 | **Release2** | 6d | 2016-06-02 09:00 A | 2016-06-09 18:00 | 41 |  |
| 53 | **Implementação** | 5d | 2016-06-02 09:00 A | 2016-06-08 18:00 |  |  |
| 54 | [RFS5] Cadastrar usuário Associado | 2.5d | 2016-06-02 09:00 A | 2016-06-04 17:00 A |  | Samuel |
| 55 | [RFS6] Consultar Associado | 2.5d | 2016-06-02 09:00 A | 2016-06-04 17:00 A |  | Samuel |
| 56 | [RFS7] Alterar Associado | 2.25d | 2016-06-02 09:00 A | 2016-06-04 15:00 A |  | Samuel |
| 57 | [RFS8] Remover Associado | 2.25d | 2016-06-02 09:00 A | 2016-06-04 15:00 A |  | Samuel |
| 58 | [RFS13] Cadastrar Insumo | 0.46d | 2016-06-02 09:00 A | 2016-06-02 16:40 A |  | Carlos; Gabriel; Joyce |
| 59 | [RFS14] Consultar Insumo | 1.19d | 2016-06-02 09:00 A | 2016-06-03 14:30 A |  | Gabriel; Joyce |
| 60 | [RFS15] Alterar Insumo | 0.46d | 2016-06-02 09:00 A | 2016-06-02 16:40 A |  | Carlos; Gabriel; Joyce |
| 61 | [RFS16] Remover Insumo | 0.46d | 2016-06-02 09:00 A | 2016-06-02 16:40 A |  | Carlos; Gabriel; Joyce |
| 62 | **Teste** | 2d | 2016-06-08 09:00 A | 2016-06-09 18:00 |  |  |
| 63 | Teste de CRUD (Associado) | 1d | 2016-06-08 09:00 A | 2016-06-08 18:00 A |  | Joyce |
| 64 | Teste de CRUD (Insumo) | 0.25d | 2016-06-08 09:00 A | 2016-06-08 15:00 A |  | Joyce |
| 65 | **Release3** | 6d | 2016-06-09 09:00 A | 2016-06-16 18:00 | 52 |  |
| 66 | Issues | 1d | 2016-06-16 09:00 | 2016-06-16 18:00 |  | Carlos |
| 67 | **Implementação** | 5d | 2016-06-09 09:00 A | 2016-06-15 18:00 |  |  |
| 68 | [RFS9] Cadastrar Produção | 2.5d | 2016-06-09 09:00 A | 2016-06-11 17:00 A |  | David |
| 69 | [RFS10] Consultar Produção | 2.5d | 2016-06-09 09:00 A | 2016-06-11 17:00 A |  | David |
| 70 | [RFS11] Alterar Produção | 2.5d | 2016-06-09 09:00 A | 2016-06-12 17:00 |  | David |
| 71 | [RFS12] Remover Produção | 2.5d | 2016-06-09 09:00 A | 2016-06-12 17:00 |  | David |
| 72 | [RFS17] Cadastrar Maquinário | 0.5d | 2016-06-09 09:00 A | 2016-06-09 17:00 A |  | Gabriel; Joyce; Samuel |
| 73 | [RFS18] Consultar Maquinário | 0.5d | 2016-06-09 09:00 A | 2016-06-09 17:00 A |  | Gabriel; Joyce; Samuel |
| 74 | [RFS19] Alterar Maquinário | 0.5d | 2016-06-09 09:00 A | 2016-06-09 17:00 A |  | Gabriel; Joyce; Samuel |
| 75 | [RFS20] Remover Maquinário | 0.5d | 2016-06-09 09:00 A | 2016-06-09 17:00 A |  | Gabriel; Joyce; David |
| 76 | Relacionamentos/Regras de negocio | 1.5d | 2016-06-09 09:00 A | 2016-06-10 17:00 A |  | Gabriel; Joyce; Samuel |
| 77 | **Teste** | 2d | 2016-06-15 09:00 | 2016-06-16 18:00 |  |  |
| 78 | Teste de CRUD (Produção) | 1d | 2016-06-15 09:00 | 2016-06-15 18:00 |  | Joyce |
| 79 | Teste de CRUD (Maquinário) | 0.25d | 2016-06-15 09:00 | 2016-06-15 15:00 |  | Joyce |
| 80 | **Release4** | 6d | 2016-06-16 09:00 | 2016-06-23 18:00 | 65 |  |
| 81 | **Implementação** | 5d | 2016-06-16 09:00 | 2016-06-22 18:00 |  |  |
| 82 | [RFS29] Cadastrar Empréstimo | 0.25d | 2016-06-16 09:00 | 2016-06-16 15:00 |  | David; Gabriel; Joyce; Samuel |
| 83 | [RFS30] Consultar Empréstimo | 0.25d | 2016-06-16 09:00 | 2016-06-16 15:00 |  | David; Gabriel; Joyce; Samuel |
| 84 | [RFS31] Alterar Empréstimo | 0.25d | 2016-06-16 09:00 | 2016-06-16 15:00 |  | David; Gabriel; Joyce; Samuel |
| 85 | [RFS32] Remover Empréstimo | 0.38d | 2016-06-16 09:00 | 2016-06-16 16:00 |  | David; Gabriel; Joyce; Samuel |
| 86 | [RFS33] Cadastrar Patrimônio | 0.25d | 2016-06-16 09:00 | 2016-06-16 15:00 |  | David; Gabriel; Joyce; Samuel |
| 87 | [RFS34] Consultar Patrimônio | 0.25d | 2016-06-16 09:00 | 2016-06-16 15:00 |  | David; Gabriel; Joyce; Samuel |
| 88 | [RFS35] Alterar Patrimônio | 0.31d | 2016-06-16 09:00 | 2016-06-16 15:30 |  | David; Gabriel; Joyce; Samuel |
| 89 | [RFS36] Remover Patrimônio | 0.44d | 2016-06-16 09:00 | 2016-06-16 16:30 |  | David; Gabriel; Joyce; Samuel |
| 90 | Gerar Relatórios de Produção | 1.06d | 2016-06-16 09:00 | 2016-06-17 13:30 |  | David; Gabriel; Joyce; Samuel |
| 91 | **Teste** | 2d | 2016-06-22 09:00 | 2016-06-23 18:00 |  |  |
| 92 | Teste de CRUD (Patrimonio) | 1d | 2016-06-22 09:00 | 2016-06-22 18:00 |  | Joyce |
| 93 | Teste de CRUD (Emprestimo) | 0.12d | 2016-06-22 09:00 | 2016-06-22 14:00 |  | Joyce |
| 94 | Testar geração de relatório(Produção) | 0.12d | 2016-06-22 09:00 | 2016-06-22 14:00 |  | Joyce |
| 95 | **Teste de configuração** | 26d | 2016-05-19 09:00 | 2016-06-23 18:00 |  |  |
| 96 | Gerenciar Blanches | 2.25d | 2016-05-19 09:00 | 2016-05-21 15:00 |  | Carlos |

Removed: 27 Release2; 28 Release3; 29 Release4

Changed:

| ID | Task | Start | Finish | Duration | Complete | Total float | Predecessors | Other |
| --- | --- | --- | --- | --- | --- | --- | --- | --- |
| 1 | **CooAgro** | 2016-04-29 → 2016-04-29 09:00 A | 2016-06-16 → 2016-06-23 18:00 (+7d) | 35d → 40d | 0% → 90% |  |  |  |
| 2 | **Prospecção** | 2016-04-29 → 2016-04-29 09:00 A | 2016-05-12 → 2016-05-05 18:00 A (-7d) | 10d → 5d | 0% → 100% |  |  |  |
| 3 | **Ptec** | 2016-04-29 → 2016-04-29 09:00 A | 2016-05-05 → 2016-05-05 18:00 A |  | 0% → 100% |  |  |  |
| 4 | Estudar dominio | 2016-04-29 → 2016-04-29 09:00 A | 2016-04-29 → 2016-04-29 17:00 A |  | 0% → 100% |  |  |  |
| 5 | Reuniões como cliente | 2016-05-02 → 2016-04-29 17:00 A (-3d) | 2016-05-03 → 2016-05-03 18:00 A | 1.12d → 2d | 0% → 100% |  |  |  |
| 6 | Redigir Proposta | 2016-05-04 → 2016-05-03 09:00 A (-1d) | 2016-05-06 → 2016-05-05 18:00 A (-1d) |  | 0% → 100% |  |  |  |
| 7 | Revisar proposta | 2016-05-09 → 2016-05-05 09:00 A (-4d) | 2016-05-09 → 2016-05-05 18:00 A (-4d) |  | 0% → 100% |  |  |  |
| 8 | Aprova porposta | 2016-05-10 → 2016-05-05 09:00 A (-5d) | 2016-05-10 → 2016-05-05 18:00 A (-5d) |  | 0% → 100% | 31d → none | 7 → none | constraint start no earlier than 2016-05-05 → start no earlier than 2016-05-05 09:00; resources none → Adler |
| 9 | **Est. Pre. Tam** | 2016-05-09 → 2016-05-05 09:00 A (-4d) | 2016-05-10 → 2016-05-05 18:00 A (-5d) | 2d → 1d | 0% → 100% |  |  |  |
| 10 | Estimar tamanho do projeto | 2016-05-10 → 2016-05-05 09:00 A (-5d) | 2016-05-10 → 2016-05-05 18:00 A (-5d) |  | 0% → 100% |  |  | resources Carlos; Henrique → Carlos |
| 11 | Revisar estimativa de tamanho | 2016-05-10 → 2016-05-05 09:00 A (-5d) | 2016-05-10 → 2016-05-05 18:00 A (-5d) |  | 0% → 100% |  |  | resources Joyce → David; Gabriel; Joyce; Samuel |
| 12 | **Análise** | 2016-05-09 → 2016-05-06 09:00 (-3d) | 2016-05-13 → 2016-05-13 18:00 A | 5d → 6d | 0% → 100% |  | none → 2 |  |
| 13 | Elicitação dos requisitos | 2016-05-10 → 2016-05-07 09:00 A (-3d) | 2016-05-10 → 2016-05-09 18:00 A (-1d) | 0.88d → 2d | 0% → 100% |  |  |  |
| 14 | Validação | 2016-05-11 → 2016-05-10 17:00 A (-1d) | 2016-05-11 → 2016-05-10 18:00 A (-1d) | 1d → 0.12d | 0% → 100% |  |  | resources David; Gabriel; Henrique; Joyce; Samuel → David; Gabriel; Joyce; Samuel |
| 15 | **Doc Req** | 2016-05-09 → 2016-05-09 09:00 A | 2016-05-12 → 2016-05-12 18:00 A |  | 0% → 100% |  | none → 14 |  |
| 17 | Redigir Doc Req | 2016-05-12 → 2016-05-09 09:00 A (-3d) | 2016-05-16 → 2016-05-12 18:00 A (-4d) | 3d → 4d | 0% → 100% |  | 14 → none | resources David; Gabriel; Henrique; Joyce; Samuel → David; Gabriel; Joyce; Samuel |
| 19 | Submenter o Doc Req | 2016-05-17 → 2016-05-12 09:00 A (-5d) | 2016-05-17 → 2016-05-12 10:00 A (-5d) | 0.88d → 0.12d | 0% → 100% |  | 17 → 16 | was named Revisão do Doc Req; resources Carlos → Adler |
| 20 | **Matriz de Rastriabilidade** | 2016-05-09 → 2016-05-09 09:00 A | 2016-05-12 → 2016-05-12 18:00 A |  | 0% → 100% |  |  |  |
| 21 | Elaborar a matriz | 2016-05-18 → 2016-05-09 09:00 A (-9d) | 2016-05-19 → 2016-05-12 18:00 A (-7d) | 1.88d → 4d | 0% → 100% |  | 19 → none |  |
| 22 | Revisar a Matriz | 2016-05-24 → 2016-05-12 09:00 A (-12d) | 2016-05-24 → 2016-05-12 18:00 A (-12d) |  | 0% → 100% |  |  | resources David; Gabriel; Henrique; Joyce; Samuel → David; Gabriel; Joyce; Samuel |
| 23 | **Cronograma e Orçamentos Preliminares** | 2016-05-16 → 2016-05-12 09:00 A (-4d) | 2016-05-19 → 2016-05-13 18:00 A (-6d) | 4d → 2d | 0% → 100% |  | none → 9 | was named Est. Pref. Cronograma e Orçamentos |
| 24 | Elaborar Cronograma e Orçamentos Preliminares | 2016-05-11 → 2016-05-12 09:00 A (+1d) | 2016-05-12 → 2016-05-13 18:00 A (+1d) |  | 0% → 100% |  |  | resources Henrique; Joyce; Carlos → Carlos |
| 25 | Revisão da Elaboração | 2016-05-13 → 2016-05-12 09:00 A (-1d) | 2016-05-16 → 2016-05-13 18:00 A (-3d) |  | 0% → 100% |  |  | resources Gabriel → David; Gabriel; Joyce; Samuel |
| 26 | **Projeto** | 2016-05-09 → 2016-05-13 09:00 (+4d) | 2016-05-10 → 2016-05-19 18:00 A (+9d) | 1.88d → 5d | 0% → 100% |  | none → 12 | resources Carlos → none |
| 36 | **Implementação** | 2016-05-16 → 2016-05-19 09:00 (+3d) | 2016-06-16 → 2016-06-23 18:00 (+7d) | 24d → 26d | 0% → 83% |  | none → 26 |  |
| 41 | **Release1** | 2016-05-25 → 2016-05-26 09:00 A (+1d) | 2016-05-31 → 2016-06-02 18:00 (+2d) | 5d → 6d | 0% → 100% |  | 22 → 37 | resources David; Gabriel; Henrique; Joyce; Samuel → none |
